# Project Plan

Schedule from MS Project, 2009-05-07 to 2009-08-03, A marks actual dates.
IMS

## Calendars

- Standard: Mon-Fri 08:00-12:00, 13:00-17:00; Sat-Sun off. Exceptions (off unless hours are given): 2009-05-09 08:00-12:00, 13:00-17:00, 2009-05-16 08:00-12:00, 13:00-17:00, 2009-05-23 to 2009-05-24 08:00-12:00, 13:00-17:00, 2009-06-07 08:00-12:00, 13:00-17:00, 2009-06-27 08:00-12:00, 13:00-17:00, 2009-07-11 08:00-12:00, 13:00-17:00.

## Resources

| Resource | Group | Rate | Notes |
| --- | --- | --- | --- |
| PM | Consulting | 110 | Project Manager |
| EU | Client |  | End user |
| TECH ARCH | Consulting | 125 | Technical Architect |
| MGMT | Consulting/Client |  | Management |
| PROG MGR | Consulting | 110 | Program Manager |
| ALL |  |  | Everyone |
| DEV | Consulting | 85 | Developer |
| COMM | Client |  | Telecomm |
| DBA | Client |  | Database Admin |
| QA | Client |  | Quality Assurance |
| SUP | Consulting | 55 | Support |
| DOC | Consulting | 65 | Documentation |
| DEV2 | Consulting | 85 | Developer |
| DEV3 | Consulting | 85 | Developer |
| DEV1 | Consulting | 85 | Developer |
| DEV4 | Consulting | 85 | Developer |
| DEV5 | Consulting | 85 | Developer |
| DEV6 | Consulting | 85 | Developer |
| ADM | Consulting |  | Developer |
| DEV7 | Consulting | 85 | Developer |
| DEV8 | Consulting | 85 | Developer |
| DEV9 | Consulting | 85 | Developer |
| DEV10 | Consulting | 85 | Developer |
| DEV11 | Consulting | 85 | Developer |
| SYS | Client |  | System Admin |
| EB |  |  |  |
| TH |  |  |  |
| GS |  |  |  |
| ?? |  |  |  |

## Schedule

| ID | WBS | Task | Type | Duration | Start | Finish | Predecessors | Complete | Remaining | Total slack | Free slack | Constraint | Resources | Work | Actual work |
| --- | --- | --- | --- | --- | --- | --- | --- | --- | --- | --- | --- | --- | --- | --- | --- |
| 1 | 1 | **Inception** |  | 10d | 2009-05-07 A | 2009-05-18 |  | 53% | 4.67d | 0d |  |  |  | 212h | 132.8h |
| 2 | 1.1 | **Define/Refine Project Details** |  | 7d | 2009-05-07 A | 2009-05-14 |  | 68% | 2.24d | 3d |  |  |  | 128h | 108.8h |
| 3 | 1.1.1 | Pre-planning with team members |  | 1d | 2009-05-07 A | 2009-05-07 A |  | 100% |  |  |  | finish no earlier than 2009-05-07 | EB; TH; GS | 24h | 24h |
| 4 | 1.1.2 | Setup project plan |  | 1d | 2009-05-09 A | 2009-05-09 A |  | 100% |  |  |  | start no earlier than 2009-05-09 | EB | 8h | 8h |
| 5 | 1.1.3 | Define system capabilities |  | 6d | 2009-05-08 A | 2009-05-14 |  | 80% | 1.2d | 3d |  | finish no earlier than 2009-05-14 | EB; ?? | 96h | 76.8h |
| 6 | 1.1.4 | Develop context (domain) diagram | milestone | 2d | 2009-05-11 | 2009-05-12 |  |  |  | 5d |  | start no earlier than 2009-05-11 |  |  |  |
| 7 | 1.2 | **Produce project schedule** |  | 1.5d | 2009-05-14 | 2009-05-15 |  |  |  | 2.5d |  |  |  | 4h |  |
| 8 | 1.2.1 | Refine work breakdown structure |  | 0.5d | 2009-05-14 | 2009-05-14 |  |  |  | 3.5d |  | start no earlier than 2009-05-14 | EB | 4h |  |
| 9 | 1.2.2 | Refine estimate resources, durations |  | 0.5d | 2009-05-15 | 2009-05-15 |  |  |  | 2.5d |  | start no earlier than 2009-05-15 |  |  |  |
| 10 | 1.3 | **Confirm project feasibility** |  | 7d | 2009-05-11 | 2009-05-18 |  |  |  | 0d |  |  |  | 56h |  |
| 11 | 1.3.1 | Evaluate technical feasibility |  | 6d | 2009-05-11 | 2009-05-16 |  |  |  | 0d |  | finish no earlier than 2009-05-16 | ?? | 48h |  |
| 12 | 1.3.2 | Evaluate schedule feasibility |  | 1d | 2009-05-18 | 2009-05-18 | 11 |  |  | 0d |  |  | ?? | 8h |  |
| 13 | 1.4 | **Launch project** |  | 8d | 2009-05-08 A | 2009-05-16 A |  | 100% |  |  |  |  |  | 24h | 24h |
| 14 | 1.4.1 | Setup project facilities |  | 3d | 2009-05-08 A | 2009-05-11 A |  | 100% |  |  |  | start no earlier than 2009-05-08 | GS | 24h | 24h |
| 15 | 1.4.2 | Confirm Tomcat setup |  | 1d | 2009-05-15 A | 2009-05-15 A |  | 100% |  |  |  | start no earlier than 2009-05-15 |  |  |  |
| 16 | 1.4.3 | Confirm MySQL database setup |  | 1d | 2009-05-15 A | 2009-05-15 A |  | 100% |  |  |  | start no earlier than 2009-05-15 |  |  |  |
| 17 | 1.4.4 | Create test war file to deploy test |  | 1d | 2009-05-16 A | 2009-05-16 A |  | 100% |  |  |  | finish no earlier than 2009-05-16 |  |  |  |
| 18 | 2 | **Iteration 1** |  | 31d | 2009-05-19 A | 2009-06-25 | 1 | 7% | 28.71d | 0d |  |  |  | 16h |  |
| 19 | 2.1 | **Elaboration** |  | 8d | 2009-05-19 A | 2009-05-26 | 1 | 22% | 6.27d | 1d | 0d |  |  |  |  |
| 20 | 2.1.1 | Define/document requirements |  | 8d | 2009-05-19 A | 2009-05-26 |  | 50% | 4d | 1d |  | start no earlier than 2009-05-19 |  |  |  |
| 21 | 2.1.2 | Update design document |  | 8d | 2009-05-19 A | 2009-05-26 |  | 5% | 7.6d | 1d |  | start no earlier than 2009-05-19 |  |  |  |
| 22 | 2.1.3 | Define test scripts for iteration 1 |  | 8d | 2009-05-19 | 2009-05-26 |  |  |  | 1d |  | start no earlier than 2009-05-19 |  |  |  |
| 23 | 2.1.4 | Create POC of Web Services |  | 4h | 2009-05-23 A | 2009-05-23 A |  | 100% |  |  |  | start no earlier than 2009-05-23 |  |  |  |
| 24 | 2.1.5 | Create POC of Login Process on BB |  | 4h | 2009-05-24 A | 2009-05-24 A |  | 100% |  |  |  | start no earlier than 2009-05-24 |  |  |  |

| ID | WBS | Task | Duration | Start | Finish | Predecessors | Total slack | Free slack | Constraint | Resources | Work |
| --- | --- | --- | --- | --- | --- | --- | --- | --- | --- | --- | --- |
| 25 | 2.2 | **Construction - Part 1 - Demo of executable** | 15d | 2009-05-27 | 2009-06-15 | 19 | 1d |  |  |  | 16h |
| 26 | 2.2.1 | **Create Login Page in BB** | 13d | 2009-05-27 | 2009-06-11 |  | 0d |  |  |  |  |
| 27 | 2.2.1.1 | Create database code to perform login of user | 4d | 2009-05-27 | 2009-06-01 |  | 1d |  |  |  |  |
| 28 | 2.2.1.2 | Create login web service | 3d | 2009-06-03 | 2009-06-05 | 27 | 0d |  | start no earlier than 2009-06-03 |  |  |
| 29 | 2.2.1.3 | Create BB screen for display | 5d | 2009-06-07 | 2009-06-11 | 28 | 0d |  |  |  |  |
| 30 | 2.2.2 | **Create Logic to Search for Locations (Trips) on Map** | 13d | 2009-05-27 | 2009-06-11 |  | 8d | 0d |  |  |  |
| 31 | 2.2.2.1 | Create database code to perform search | 5d | 2009-05-27 | 2009-06-02 |  | 10d | 2d | start no earlier than 2009-05-27 |  |  |
| 32 | 2.2.2.2 | Create web service for BB app | 2d | 2009-06-05 | 2009-06-07 | 31 | 8d | 0d | finish no earlier than 2009-06-07 |  |  |
| 33 | 2.2.2.3 | Create BB screen to display locations | 4d | 2009-06-08 | 2009-06-11 | 32 | 8d |  | start no earlier than 2009-06-07 |  |  |
| 34 | 2.2.3 | Display Map | 13d | 2009-05-27 | 2009-06-11 |  | 8d | 0d |  |  |  |
| 35 | 2.2.4 | Update design documentation | 2d | 2009-06-12 | 2009-06-15 | 26, 30, 34 | 8d |  |  | EB | 16h |
| 36 | 2.3 | Construction - Part 2 | 8d | 2009-06-12 | 2009-06-23 | 26, 19 | 0d |  | finish no earlier than 2009-06-23 |  |  |
| 37 | 2.4 | Transition | 2d | 2009-06-24 | 2009-06-25 | 36 | 0d |  | finish no earlier than 2009-06-25 |  |  |
| 38 | 3 | **Iteration 2** | 11d | 2009-06-26 | 2009-07-09 |  | 0d |  |  |  |  |
| 39 | 3.1 | Elaboration | 1d | 2009-06-26 | 2009-06-26 | 18 | 0d |  | start no earlier than 2009-06-26 |  |  |
| 40 | 3.2 | Construction | 8d | 2009-06-27 | 2009-07-07 | 39 | 0d |  | finish no earlier than 2009-07-07 |  |  |
| 41 | 3.3 | Transition | 2d | 2009-07-08 | 2009-07-09 | 40 | 0d |  |  |  |  |
| 42 | 4 | **Iteration 3** | 11d | 2009-07-10 | 2009-07-23 |  | 0d |  |  |  |  |
| 43 | 4.1 | Elaboration | 1d | 2009-07-10 | 2009-07-10 | 38 | 0d |  | start no earlier than 2009-07-10 |  |  |
| 44 | 4.2 | Construction | 8d | 2009-07-11 | 2009-07-21 | 43 | 0d |  | finish no earlier than 2009-07-21 |  |  |
| 45 | 4.3 | Transition | 2d | 2009-07-22 | 2009-07-23 | 44 | 0d |  |  |  |  |
| 46 | 5 | **Project Completion** | 7d | 2009-07-24 | 2009-08-03 |  | 0d |  |  |  |  |
| 47 | 5.1 | Complete documentation | 7d | 2009-07-24 | 2009-08-03 | 42 | 0d |  | start no earlier than 2009-07-24 |  |  |
| 48 | 5.2 | Complete Presentation | 7d | 2009-07-24 | 2009-08-03 | 42 | 0d |  |  |  |  |
